# wbs-jtpbot

Schedule from MS Project, 2010-04-08 to 2010-04-20.

## Calendars

- Estándar: Mon-Fri 09:00-13:00, 15:00-19:00; Sat-Sun off.

## Resources

| Resource |
| --- |
| Enrique Madrid (PE) |
| Felix Maza (PE) |
| Richard Acosta (PE) |
| Deiby Torres (VE) |
| IT Ajeven (VE) |
| Distribución Ajeven (VE) |
| Alberto Llosa (PE) |
| Antonio Castañeda (PE) |
| Ronal Urbano (PE) |

## Schedule

| ID | WBS | Task | Duration | Start | Finish | Predecessors | Total slack | Free slack | Resources | Work |
| --- | --- | --- | --- | --- | --- | --- | --- | --- | --- | --- |
| 1 | 1 | **JTPBOT Venezuela** | 8.62d | 2010-04-08 09:00 | 2010-04-20 16:00 |  | 0d |  |  | 138h |
| 2 | 1.1 | **1.0 Infraestructura** | 1.5d | 2010-04-08 09:00 | 2010-04-09 13:00 |  | 1.75d | 0d |  | 28h |
| 3 | 1.1.1 | **1.1 Servidor Móvil** | 1.38d | 2010-04-08 09:00 | 2010-04-09 12:00 |  | 1.75d | 0d |  | 11h |
| 4 | 1.1.1.1 | 1.1.A01Asignar servidor móvil | 1d | 2010-04-08 09:00 | 2010-04-08 19:00 |  | 1.75d | 0d | Deiby Torres (VE) | 8h |
| 5 | 1.1.1.2 | 1.1.A02 Validar especificaciones servidor móvil | 1h | 2010-04-09 09:00 | 2010-04-09 10:00 | 4 | 1.75d | 0d | Felix Maza (PE) | 1h |
| 6 | 1.1.1.3 | 1.1.A03 Instalar Sistema Operativo Windows Tech NT | 1h | 2010-04-09 10:00 | 2010-04-09 11:00 | 5 | 1.75d | 0d | Richard Acosta (PE) | 1h |
| 7 | 1.1.1.4 | 1.1.A04 Verficar servidor movil | 1h | 2010-04-09 11:00 | 2010-04-09 12:00 | 6 | 1.75d |  | Felix Maza (PE) | 1h |
| 8 | 1.1.2 | **1.2 Servicios Moviles** | 0.12d | 2010-04-09 12:00 | 2010-04-09 13:00 | 3 | 1.75d |  |  | 3h |
| 9 | 1.1.2.1 | 1.2.A01 Instalar Servidor MS-SQL Server | 1h | 2010-04-09 12:00 | 2010-04-09 13:00 |  | 1.75d |  | Richard Acosta (PE) | 1h |
| 10 | 1.1.2.2 | 1.2.A02 Instalar servidor ISS | 1h | 2010-04-09 12:00 | 2010-04-09 13:00 |  | 1.75d |  | Richard Acosta (PE) | 1h |
| 11 | 1.1.2.3 | 1.2.A03 Instalar Componentes .NET para JTPBOT | 1h | 2010-04-09 12:00 | 2010-04-09 13:00 |  | 1.75d |  | Richard Acosta (PE) | 1h |
| 12 | 1.1.3 | **1.3 Celulares y emulador** | 0.25d | 2010-04-08 09:00 | 2010-04-08 11:00 |  | 2.62d | 0d |  | 3h |
| 13 | 1.1.3.1 | 1.3.A01 Recibir los celulares del proveedor GSM/GPRS Nokia 5130 | 1h | 2010-04-08 09:00 | 2010-04-08 10:00 |  | 2.62d | 0d | Distribución Ajeven (VE) | 1h |
| 14 | 1.1.3.2 | 1.3.A02 Cargar completa de celulares según manual (8 a 12 horas) | 1h | 2010-04-08 10:00 | 2010-04-08 11:00 | 13 | 2.62d |  | Distribución Ajeven (VE) | 1h |
| 15 | 1.1.3.3 | 1.3.A03 Instalar emulador Nokia GSM para asistentes de distribución | 0.5h | 2010-04-08 09:00 | 2010-04-08 09:30 |  | 2.81d |  | Felix Maza (PE); IT Ajeven (VE) | 1h |
| 16 | 1.1.4 | **1.4 Aplicación JTPBOT** | 0.38d | 2010-04-08 11:00 | 2010-04-08 16:00 | 12 | 2.62d |  |  | 11h |
| 17 | 1.1.4.1 | 1.4.A01 Instalar aplicativo JTPBOT a todos los celulares | 2h | 2010-04-08 11:00 | 2010-04-08 13:00 |  | 2.62d | 0d | Felix Maza (PE); Distribución Ajeven (VE); IT Ajeven (VE) | 6h |
| 18 | 1.1.4.2 | 1.4.A02 Crear acceso directo al aplicativo JTPBOT en celular | 1h | 2010-04-08 15:00 | 2010-04-08 16:00 | 17 | 2.62d |  | Felix Maza (PE); Distribución Ajeven (VE); IT Ajeven (VE) | 3h |
| 19 | 1.1.4.3 | 1.4.A03 Instalar aplicativo JTPBOT en Emuladores de asistentes de distribución | 1h | 2010-04-08 11:00 | 2010-04-08 12:00 |  | 2.88d |  | Felix Maza (PE); IT Ajeven (VE) | 2h |
| 20 | 1.2 | **2.0 Implementación** | 4.12d | 2010-04-08 09:00 | 2010-04-14 10:00 |  | 0d |  |  | 50h |
| 21 | 1.2.1 | **2.1 Gestión de maestros Magic** | 3.12d | 2010-04-08 09:00 | 2010-04-13 10:00 |  | 0.38d | 0d |  | 17h |
| 22 | 1.2.1.1 | 2.1.A01 Actualizar BDC Magic para soportar maestros de sistema JTPBOT | 1d | 2010-04-08 09:00 | 2010-04-08 19:00 |  | 0.38d | 0d | Antonio Castañeda (PE) | 8h |
| 23 | 1.2.1.2 | 2.1.A02 Actualizar CTL para soportar gestión de maestros del sistema JTPBOT | 1d | 2010-04-12 09:00 | 2010-04-12 19:00 | 22 | 0.38d | 0d | Antonio Castañeda (PE) | 8h |
| 24 | 1.2.1.3 | 2.1.A08 Verificar gestión maestros Magic | 1h | 2010-04-13 09:00 | 2010-04-13 10:00 | 23 | 0.38d |  | Alberto Llosa (PE) | 1h |

Notes:
- 23: función para activar producto para pre-venta / función para configurar presentación de producto / función para asignar un código rápido al producto / función para asignar un producto a lista de precios / función para asignar un producto a la fuerza de venta / función para asignar un celular a un usuario / función para un producto al maestro de transacciones / función para programación de rutas de vendedor

| ID | WBS | Task | Duration | Start | Finish | Predecessors | Total slack | Free slack | Resources | Work |
| --- | --- | --- | --- | --- | --- | --- | --- | --- | --- | --- |
| 25 | 1.2.2 | **2.2 Gestión de pedidos Magic** | 3.12d | 2010-04-09 09:00 | 2010-04-14 10:00 |  | 0d |  |  | 17h |
| 26 | 1.2.2.1 | 2.1.A01 Actualizar BDC Magic para soportar pedidos de sistema JTPBOT | 1d | 2010-04-09 09:00 | 2010-04-09 19:00 |  | 0d |  | Antonio Castañeda (PE) | 8h |
| 27 | 1.2.2.2 | 2.1.A02 Actualizar CTL para soportar gestión de pedidos del sistema JTPBOT | 1d | 2010-04-13 09:00 | 2010-04-13 19:00 | 26 | 0d |  | Antonio Castañeda (PE) | 8h |
| 28 | 1.2.2.3 | 2.2.A03 Verificar gestión de pedidos Magic | 1h | 2010-04-14 09:00 | 2010-04-14 10:00 | 27 | 0d |  | Alberto Llosa (PE) | 1h |
| 29 | 1.2.3 | **2.3 Implementación BDI** | 0.38d | 2010-04-09 15:00 | 2010-04-09 18:00 | 2 | 1.75d | 0d |  | 3h |
| 30 | 1.2.3.1 | 2.3.A01 Crear BDI para JTPBOT | 1h | 2010-04-09 15:00 | 2010-04-09 16:00 |  | 1.75d | 0d | Felix Maza (PE) | 1h |
| 31 | 1.2.3.2 | 2.3.A02 Crear procedimientos de BDI para JTPBOT | 1h | 2010-04-09 16:00 | 2010-04-09 17:00 | 30 | 1.75d | 0d | Felix Maza (PE) | 1h |
| 32 | 1.2.3.3 | 2.3.A03 Crear jobs de servicio MS-SQL para JTPBOT | 1h | 2010-04-09 17:00 | 2010-04-09 18:00 | 31 | 1.75d |  | Felix Maza (PE) | 1h |
| 33 | 1.2.4 | **2.4 Implementación middleware** | 0.25d | 2010-04-09 18:00 | 2010-04-12 10:00 | 29 | 1.75d | 0d |  | 2h |
| 34 | 1.2.4.1 | 2.4.A01 Instalar servidor JTPBOT para servicio ISS | 1h | 2010-04-09 18:00 | 2010-04-09 19:00 |  | 1.75d | 0d | Felix Maza (PE) | 1h |
| 35 | 1.2.4.2 | 2.4.A02 Intalar generador de archivos XML para aplicativo JTPBOT | 1h | 2010-04-12 09:00 | 2010-04-12 10:00 | 34 | 1.75d |  | Felix Maza (PE) | 1h |
| 36 | 1.2.5 | **2.5 Implementación de integración** | 0.12d | 2010-04-12 10:00 | 2010-04-12 11:00 | 33 | 1.88d |  |  | 2h |
| 37 | 1.2.5.1 | 2.5.A01 Instalar scripts SQL para envio de maestros | 1h | 2010-04-12 10:00 | 2010-04-12 11:00 | 22 | 1.88d |  | Felix Maza (PE) | 1h |
| 38 | 1.2.5.2 | 2.5.A02 Instalar scripts SQL para registro de pedidos | 1h | 2010-04-12 10:00 | 2010-04-12 11:00 | 26 | 1.88d |  | Felix Maza (PE) | 1h |
| 39 | 1.2.6 | **2.6 Implementación JTPBOT** | 0.62d | 2010-04-13 10:00 | 2010-04-13 17:00 | 21 | 0.38d |  |  | 9h |
| 40 | 1.2.6.1 | 2.6.A01 Registrar celulares en Magic para cada vendedor | 2h | 2010-04-13 10:00 | 2010-04-13 12:00 |  | 0.38d | 0d | Distribución Ajeven (VE); Felix Maza (PE) | 4h |
| 41 | 1.2.6.2 | 2.6.A02 Configurar aplicativo JTPBOT con IP y número de celular | 2h | 2010-04-13 12:00 | 2010-04-13 16:00 | 40 | 0.38d | 0d | Felix Maza (PE); Distribución Ajeven (VE) | 4h |
| 42 | 1.2.6.3 | 2.6.A03 Entregar celular a fuerza de ventas (Vendedores) | 1h | 2010-04-13 16:00 | 2010-04-13 17:00 | 41 | 0.38d |  | Distribución Ajeven (VE) | 1h |
| 43 | 1.3 | **3.0 Comunicaciones** | 2.38d | 2010-04-08 09:00 | 2010-04-12 12:00 |  | 1.75d |  |  | 7h |
| 44 | 1.3.1 | **3.1 Enlaces de BD** | 0.12d | 2010-04-09 16:00 | 2010-04-09 17:00 | 30 | 2.38d |  |  | 2h |
| 45 | 1.3.1.1 | 3.1.A01 Enlazar servidores SQL para Magic y JTPBOT | 1h | 2010-04-09 16:00 | 2010-04-09 17:00 |  | 2.38d |  | Richard Acosta (PE) | 1h |
| 46 | 1.3.1.2 | 3.1.A02 Verificar enlace de servidores SQL Magic y JTPBOT | 1h | 2010-04-09 16:00 | 2010-04-09 17:00 |  | 2.38d |  | Felix Maza (PE) | 1h |
| 47 | 1.3.2 | **3.2 Planes de datos GPRS** | 0.12d | 2010-04-09 09:00 | 2010-04-09 10:00 | 13 | 3d |  |  | 2h |
| 48 | 1.3.2.1 | 3.2.A01 Solicitar activación de planes de datos para todos los celulares | 1h | 2010-04-09 09:00 | 2010-04-09 10:00 |  | 3d |  | Deiby Torres (VE) | 1h |
| 49 | 1.3.2.2 | 3.2.A02 Verificar activación de planes de datos para celulares | 1h | 2010-04-09 09:00 | 2010-04-09 10:00 |  | 3d |  | Deiby Torres (VE) | 1h |

Notes:
- 27: Reprocesar pedidos por vendedor (opción toma pedidos) / Reprocesar pedidos por vendedor (opcional)

| ID | WBS | Task | Duration | Start | Finish | Predecessors | Total slack | Free slack | Resources | Work |
| --- | --- | --- | --- | --- | --- | --- | --- | --- | --- | --- |
| 50 | 1.3.3 | **3.3 Servicio Internet JTPBOT** | 2.38d | 2010-04-08 09:00 | 2010-04-12 12:00 |  | 1.75d |  |  | 3h |
| 51 | 1.3.3.1 | 3.3.A01 Solicitar nombre de dominio para servicio Internet JTPBOT | 1h | 2010-04-08 09:00 | 2010-04-09 09:30 |  | 2.81d | 1.06d | Deiby Torres (VE); Ronal Urbano (PE) | 1h |
| 52 | 1.3.3.2 | 3.3.A02 Publicar servicio JTPBOT ISS en Internet para acceso por WWAN | 1h | 2010-04-12 10:00 | 2010-04-12 11:00 | 51, 33 | 1.75d | 0d | Ronal Urbano (PE) | 1h |
| 53 | 1.3.3.3 | 3.3.A03 Verificar publicación de servicio JTPBOT | 1h | 2010-04-12 11:00 | 2010-04-12 12:00 | 52 | 1.75d |  | Felix Maza (PE) | 1h |
| 54 | 1.4 | **4.0 Pruebas** | 0.88d | 2010-04-14 10:00 | 2010-04-14 19:00 | 20, 43 | 0d |  |  | 14h |
| 55 | 1.4.1 | **4.1 Pruebas de maestros de datos** | 0.62d | 2010-04-14 10:00 | 2010-04-14 17:00 |  | 0d |  |  | 10h |
| 56 | 1.4.1.1 | 4.1.A01 Revisar productos configurados para preventa con JTPBOT | 1h | 2010-04-14 10:00 | 2010-04-14 11:00 |  | 0d |  | Felix Maza (PE); Distribución Ajeven (VE) | 2h |
| 57 | 1.4.1.2 | 4.1.A02 Revisar usuarios vendedores configurados para preventa con JTPBOT | 1h | 2010-04-14 11:00 | 2010-04-14 12:00 | 56 | 0d |  | Felix Maza (PE); Distribución Ajeven (VE) | 2h |
| 58 | 1.4.1.3 | 4.1.A03 Revisar rutas programadas para preventa con JTPBOT | 1h | 2010-04-14 12:00 | 2010-04-14 13:00 | 57 | 0d |  | Felix Maza (PE); Distribución Ajeven (VE) | 2h |
| 59 | 1.4.1.4 | 4.1.A04 Probar sincronización de maestros con aplicativo JTPBOT desde emulador | 1h | 2010-04-14 15:00 | 2010-04-14 16:00 | 58 | 0d |  | Felix Maza (PE); Distribución Ajeven (VE) | 2h |
| 60 | 1.4.1.5 | 4.1.A05 Probar sincronización de maestros con aplicativo JTPBOT desde celular | 1h | 2010-04-14 16:00 | 2010-04-14 17:00 | 59 | 0d |  | Felix Maza (PE); Distribución Ajeven (VE) | 2h |
| 61 | 1.4.2 | **4.2 Prueba de registros de pedidos** | 0.25d | 2010-04-14 17:00 | 2010-04-14 19:00 | 55 | 0d |  |  | 4h |
| 62 | 1.4.2.1 | 4.2.A01 Probar caida de pedidos con aplicativo JTPBOT desde emulador | 1h | 2010-04-14 17:00 | 2010-04-14 18:00 |  | 0d |  | Felix Maza (PE); Distribución Ajeven (VE) | 2h |
| 63 | 1.4.2.2 | 4.2.A02 Probar caida de pedidos con aplicativo JTPBOT desde celular | 1h | 2010-04-14 18:00 | 2010-04-14 19:00 | 62 | 0d |  | Felix Maza (PE); Distribución Ajeven (VE) | 2h |
| 64 | 1.5 | **5.0 Capacitación** | 1.25d | 2010-04-15 09:00 | 2010-04-16 11:00 | 54 | 0d |  |  | 11h |
| 65 | 1.5.1 | **5.1 Capacitación distribución y facturación** | 0.38d | 2010-04-15 09:00 | 2010-04-15 12:00 |  | 0d |  |  | 3h |
| 66 | 1.5.1.1 | 5.1.A01 Capacitar a distribución en la instalación del aplicativo móvil | 1h | 2010-04-15 09:00 | 2010-04-15 10:00 |  | 0d |  | Felix Maza (PE) | 1h |
| 67 | 1.5.1.2 | 5.1.A02 Capacitar a distribución en uso del aplicativo JTPBOT | 1h | 2010-04-15 10:00 | 2010-04-15 11:00 | 66 | 0d |  | Felix Maza (PE) | 1h |
| 68 | 1.5.1.3 | 5.1.A03 Capacitar a distribución y facturación en registro de pedidos con JTPBOT | 1h | 2010-04-15 11:00 | 2010-04-15 12:00 | 67 | 0d |  | Felix Maza (PE) | 1h |
| 69 | 1.5.2 | **5.2 Capacitación a fuerza de ventas** | 0.38d | 2010-04-15 12:00 | 2010-04-15 17:00 | 65 | 0d |  |  | 4h |
| 70 | 1.5.2.1 | 5.2.A01 Capacitar a vendedores en uso del aplicativo JTPBOT | 1h | 2010-04-15 12:00 | 2010-04-15 13:00 |  | 0d |  | Felix Maza (PE); Distribución Ajeven (VE) | 2h |
| 71 | 1.5.2.2 | 5.2.A02 Capacitar a vendedores en arquitectura Cliente/Servidor desconectado | 1h | 2010-04-15 15:00 | 2010-04-15 16:00 | 70 | 0d |  | Felix Maza (PE) | 1h |
| 72 | 1.5.2.3 | 5.2.A03 Seleccionar los Grupos 1 y 2 vendedores para seguimiento en ruta | 1h | 2010-04-15 16:00 | 2010-04-15 17:00 | 71 | 0d |  | Distribución Ajeven (VE) | 1h |
| 73 | 1.5.3 | **5.3 Capacitación a soporte IT Ajeven** | 0.5d | 2010-04-15 17:00 | 2010-04-16 11:00 | 69 | 0d |  |  | 4h |
| 74 | 1.5.3.1 | 5.3.A01 Capacitar a IT Ajeven para mantenimiento de la infraestructura empleada | 2h | 2010-04-15 17:00 | 2010-04-15 19:00 |  | 0d |  | Felix Maza (PE) | 2h |
| 75 | 1.5.3.2 | 5.3.A02 Capacitar a IT Ajeven para mantenimiento de implementación realizada | 2h | 2010-04-16 09:00 | 2010-04-16 11:00 | 74 | 0d |  | Felix Maza (PE) | 2h |

Notes:
- 67: Capacitar en toma de pedidos (crear pedidos de prueba) / Capacitar en arquitectura Cliente Servidor desconectado / Capacitar en registro de pedidos para clientes nuevos / Capacitar para verificar pedidos enviados / Capacitar para obtener efectividad de preventa / Capacitar en Cierre de día
- 68: Capacitar a distribución y facturación en la visualización de pedidos enviados por el móvil / Capacitar a facturación para la impresión de la consistencia de pedidos en proceso (opcional) / Capacitar a distribución y facturación para omitir o borrar pedidos de prueba / Capacitar a distribución y facturación en el cierre de día por vendedor.
- 70: Capacitar en toma de pedidos (crear pedidos de prueba) / Capacitar en arquitectura Cliente Servidor desconectado / Capacitar en registro de pedidos para clientes nuevos / Capacitar para verificar pedidos enviados / Capacitar para obtener efectividad de preventa / Capacitar en Cierre de día

| ID | WBS | Task | Duration | Start | Finish | Predecessors | Total slack | Resources | Work |
| --- | --- | --- | --- | --- | --- | --- | --- | --- | --- |
| 76 | 1.6 | **6.0 Salida en vivo** | 1.5d | 2010-04-16 11:00 | 2010-04-19 17:00 | 64 | 0d |  | 20h |
| 77 | 1.6.1 | **6.1 Ruta Grupo 1** | 0.5d | 2010-04-16 11:00 | 2010-04-16 17:00 |  | 0d |  | 8h |
| 78 | 1.6.1.1 | 6.1.A01 Seguir a los vendedores del grupo 1 para toma de pedidos en ruta | 4h | 2010-04-16 11:00 | 2010-04-16 17:00 |  | 0d | Distribución Ajeven (VE) | 4h |
| 79 | 1.6.1.2 | 6.1.A02 Supervisar al todos los vendedores que toma pedidos con JTPBOT | 2h | 2010-04-16 11:00 | 2010-04-16 13:00 |  | 0.25d | Felix Maza (PE); Distribución Ajeven (VE) | 4h |
| 80 | 1.6.2 | **6.2 Sesión Consultas 1** | 0.25d | 2010-04-16 17:00 | 2010-04-16 19:00 | 77 | 0d |  | 2h |
| 81 | 1.6.2.1 | 6.2.A01 Responder preguntas de vendedores que utilizaron JTPBOT | 1h | 2010-04-16 17:00 | 2010-04-16 18:00 |  | 0d | Felix Maza (PE) | 1h |
| 82 | 1.6.2.2 | 6.2.A02 Capacitar a vendedores que tuvieron problemas | 1h | 2010-04-16 18:00 | 2010-04-16 19:00 | 81 | 0d | Distribución Ajeven (VE) | 1h |
| 83 | 1.6.3 | **6.3 Ruta Grupo 2** | 0.5d | 2010-04-19 09:00 | 2010-04-19 13:00 | 80 | 0d |  | 8h |
| 84 | 1.6.3.1 | 6.3.A01 Seguir a los vendedores del grupo 1 para toma de pedidos en ruta | 4h | 2010-04-19 09:00 | 2010-04-19 13:00 |  | 0d | Distribución Ajeven (VE) | 4h |
| 85 | 1.6.3.2 | 6.3.A02 Supervisar al todos los vendedores que toma pedidos con JTPBOT | 2h | 2010-04-19 09:00 | 2010-04-19 11:00 |  | 0.25d | Felix Maza (PE); Distribución Ajeven (VE) | 4h |
| 86 | 1.6.4 | **6.4 Sesión Consultas 2** | 0.25d | 2010-04-19 15:00 | 2010-04-19 17:00 | 83 | 0d |  | 2h |
| 87 | 1.6.4.1 | 6.4.A01 Responder preguntas de vendedores que utilizaron JTPBOT | 1h | 2010-04-19 15:00 | 2010-04-19 16:00 |  | 0d | Felix Maza (PE) | 1h |
| 88 | 1.6.4.2 | 6.4.A02 Capacitar a vendedores que tuvieron problemas | 1h | 2010-04-19 16:00 | 2010-04-19 17:00 | 87 | 0d | Distribución Ajeven (VE) | 1h |
| 89 | 1.7 | **7.0 Soporte** | 0.5d | 2010-04-19 17:00 | 2010-04-20 11:00 | 76 | 0d |  | 5h |
| 90 | 1.7.1 | **7.1 Contactos Proveedor WWAN** | 0.12d | 2010-04-19 17:00 | 2010-04-19 18:00 |  | 0d |  | 1h |
| 91 | 1.7.1.1 | 7.1.A01 Registrar contactos con proveedor WWAN | 1h | 2010-04-19 17:00 | 2010-04-19 18:00 |  | 0d | Felix Maza (PE) | 1h |
| 92 | 1.7.2 | **7.2 Contactos Distribución** | 0.12d | 2010-04-19 17:00 | 2010-04-19 18:00 |  | 0d |  | 1h |
| 93 | 1.7.2.1 | 7.2.A01 Registrar contactos con asistentes de ditribución | 1h | 2010-04-19 17:00 | 2010-04-19 18:00 |  | 0d | Felix Maza (PE) | 1h |
| 94 | 1.7.3 | **7.3 Procedimiento Soporte** | 0.38d | 2010-04-19 18:00 | 2010-04-20 11:00 | 90, 92 | 0d |  | 3h |
| 95 | 1.7.3.1 | 7.3.A01 Elaborar plan de respuesta para soporte | 2h | 2010-04-19 18:00 | 2010-04-20 10:00 |  | 0d | Enrique Madrid (PE) | 2h |
| 96 | 1.7.3.2 | 7.3.A02 Aprobar pan de respuesta para soporte | 1h | 2010-04-20 10:00 | 2010-04-20 11:00 | 95 | 0d | Deiby Torres (VE) | 1h |
| 97 | 1.8 | **8.0 Gestion de Proyecto** | 0.38d | 2010-04-20 11:00 | 2010-04-20 16:00 | 89 | 0d |  | 3h |
| 98 | 1.8.1 | **8.1 Cierre Proyecto** | 0.38d | 2010-04-20 11:00 | 2010-04-20 16:00 |  | 0d |  | 3h |
| 99 | 1.8.1.1 | 8.1.A01 Elaborar acta de confirmidad de implementación | 2h | 2010-04-20 11:00 | 2010-04-20 13:00 |  | 0d | Enrique Madrid (PE) | 2h |
| 100 | 1.8.1.2 | 8.1.A02 Aprobar acta de conformidad de implementación | 1h | 2010-04-20 15:00 | 2010-04-20 16:00 | 99 | 0d | Deiby Torres (VE) | 1h |
